# Firma-PlanRazvoja

Schedule from MS Project, 2008-02-04 to 2008-05-07, costs in kn, A marks actual dates.

## Calendars

- Standard: Mon-Fri 08:00-12:00, 13:00-17:00; Sat-Sun off.

## Resources

| Resource | Rate |
| --- | --- |
| Korisnik | 10 |
| Sponzor projekta | 20 |
| Voditelj projekta | 25 |
| Sistem analitičar | 15 |
| Projektant | 20 |
| Razvojnik | 20 |
| Administrator baze podataka | 15 |
| Sistem administrator | 15 |
| Tester | 15 |

## Schedule

| ID | WBS | Task | Type | Duration | Start | Finish | Predecessors | Complete | Remaining | Total slack | Free slack | Resources | Work | Actual work | Cost | Actual cost |
| --- | --- | --- | --- | --- | --- | --- | --- | --- | --- | --- | --- | --- | --- | --- | --- | --- |
| 1 | 1 | **Doseg** |  | 7d | 2008-02-04 A | 2008-02-12 |  | 99% | 0d | 61d |  |  | 80h | 80h | 1,940 | 1,940 |
| 2 | 1.1 | Određivanje dosega |  | 5d | 2008-02-04 A | 2008-02-08 A |  | 100% |  |  |  | Voditelj projekta | 40h | 40h | 1,000 | 1,000 |
| 3 | 1.2 | Određivanje sponzorstva |  | 1.5d | 2008-02-11 A | 2008-02-12 A | 2 | 100% |  |  |  | Sponzor projekta; Voditelj projekta | 24h | 24h | 540 | 540 |
| 4 | 1.3 | Određivanje resursa |  | 2d | 2008-02-11 A | 2008-02-12 A | 2 | 100% |  |  |  | Voditelj projekta | 16h | 16h | 400 | 400 |
| 5 | 1.4 | Dovršetak dosega | milestone | 0d | 2008-02-12 | 2008-02-12 | 3, 4 |  |  | 61d |  |  |  |  |  |  |
| 6 | 2 | **Analiza/Softverski zahtjevi** |  | 16d | 2008-02-13 A | 2008-03-05 |  | 99% | 0d | 45d |  |  | 128h | 128h | 1,920 | 1,920 |
| 7 | 2.1 | Analiza potreba |  | 5d | 2008-02-13 A | 2008-02-19 A | 5 | 100% |  |  |  | Sistem analitičar | 40h | 40h | 600 | 600 |
| 8 | 2.2 | Prikupljanje informacija |  | 6d | 2008-02-20 A | 2008-02-27 A | 7 | 100% |  |  |  | Sistem analitičar | 48h | 48h | 720 | 720 |
| 9 | 2.3 | Prijedlog izvedbe sustava |  | 5d | 2008-02-28 A | 2008-03-05 A | 8 | 100% |  |  |  | Sistem analitičar | 40h | 40h | 600 | 600 |
| 10 | 2.4 | Dovršetak analize | milestone | 0d | 2008-03-05 | 2008-03-05 | 9 |  |  | 45d |  |  |  |  |  |  |
| 11 | 3 | **Dizajn** |  | 5d | 2008-03-06 A | 2008-03-12 |  | 99% | 0d | 2.5d |  |  | 120h | 120h | 2,000 | 2,000 |
| 12 | 3.1 | Razvoj funkcionalnih specifikacija |  | 5d | 2008-03-06 A | 2008-03-12 A | 10 | 100% |  |  |  | Sistem analitičar; Projektant | 80h | 80h | 1,400 | 1,400 |
| 13 | 3.2 | Izrada baze podataka |  | 5d | 2008-03-06 A | 2008-03-12 A | 10 | 100% |  |  |  | Administrator baze podataka | 40h | 40h | 600 | 600 |
| 14 | 3.3 | Dovršetak dizajna | milestone | 0d | 2008-03-12 | 2008-03-12 | 13, 12 |  |  | 2.5d | 0d |  |  |  |  |  |
| 15 | 4 | **Razvoj** |  | 35d | 2008-03-13 A | 2008-04-30 |  | 8% | 32.22d | 0d |  |  | 504h | 40h | 10,080 | 800 |
| 16 | 4.1 | Izrada formi korisničkog sučelja |  | 4d | 2008-03-13 A | 2008-03-18 | 12 | 31% | 2.75d | 9d | 0d | Razvojnik | 32h | 10h | 640 | 200 |
| 17 | 4.2 | Izrada funkcija za pohranu podataka |  | 12d | 2008-03-13 A | 2008-03-28 | 14 | 10% | 10.75d | 13d |  | Razvojnik | 96h | 10h | 1,920 | 200 |
| 18 | 4.3 | Izrada funkcija za ispis izvještaja |  | 15d | 2008-03-13 A | 2008-04-02 | 14 | 8% | 13.75d | 1.25d | 0d | Razvojnik | 120h | 10h | 2,400 | 200 |
| 19 | 4.4 | Izrada izvještaja |  | 10d | 2008-04-03 A | 2008-04-16 | 18 | 13% | 8.75d | 0d |  | Razvojnik | 80h | 10h | 1,600 | 200 |
| 20 | 4.5 | Izrada funkcija izračuna |  | 12d | 2008-03-19 | 2008-04-03 | 16 |  |  | 9d |  | Razvojnik | 96h |  | 1,920 |  |
| 21 | 4.6 | Razvojno testiranje (debugiranje) |  | 10d | 2008-04-17 | 2008-04-30 | 16, 17, 18, 19, 20 |  |  | 0d |  | Razvojnik | 80h |  | 1,600 |  |
| 22 | 4.7 | Dovršetak razvoja | milestone | 0d | 2008-04-30 | 2008-04-30 | 21 |  |  | 0d |  |  |  |  |  |  |
| 23 | 5 | **Testiranje** |  | 12d | 2008-03-13 | 2008-03-28 |  |  |  | 23d |  |  | 192h |  | 2,880 |  |
| 24 | 5.1 | Izrada testova programskig cjelina prema specifikacijama proizvoda |  | 5d | 2008-03-13 | 2008-03-19 | 14 |  |  | 23d | 0d | Tester | 40h |  | 600 |  |
| 25 | 5.2 | Izrada plana integracijskog testiranja prema specifikacijama proizvoda |  | 5d | 2008-03-13 | 2008-03-19 | 14 |  |  | 23d | 0d | Tester | 40h |  | 600 |  |
| 26 | 5.3 | Testiranje komponenti prema specifikacijama proizvoda |  | 7d | 2008-03-20 | 2008-03-28 | 24 |  |  | 23d | 0d | Tester | 56h |  | 840 |  |
| 27 | 5.4 | Provjera integracije modula |  | 7d | 2008-03-20 | 2008-03-28 | 25 |  |  | 23d | 0d | Tester | 56h |  | 840 |  |
| 28 | 5.5 | Dovršetak testiranja | milestone | 0d | 2008-03-28 | 2008-03-28 | 26, 27 |  |  | 23d | 0d |  |  |  |  |  |

| ID | WBS | Task | Type | Duration | Start | Finish | Predecessors | Total slack | Free slack | Resources | Work | Cost |
| --- | --- | --- | --- | --- | --- | --- | --- | --- | --- | --- | --- | --- |
| 29 | 6 | **Dokumentacija** |  | 5d | 2008-05-01 | 2008-05-07 |  | 0d |  |  | 40h | 800 |
| 30 | 6.1 | Razvoj specifikacija i sustava pomoći |  | 5d | 2008-05-01 | 2008-05-07 | 22 | 0d |  | Razvojnik | 40h | 800 |
| 31 | 6.2 | Dovršetak dokumentacije | milestone | 0d | 2008-05-07 | 2008-05-07 | 30 | 0d |  | Razvojnik |  |  |
| 32 | 7 | **Uvođenje sustava i poduka korisnika** |  | 5d | 2008-03-31 | 2008-04-04 |  | 23d |  |  | 80h | 1,400 |
| 33 | 7.1 | Ugradnja programske potpore |  | 5d | 2008-03-31 | 2008-04-04 | 28 | 23d | 0d | Razvojnik; Sistem administrator | 80h | 1,400 |
| 34 | 7.2 | Dovršetak uvođenja sustava i poduke korisnika | milestone | 0d | 2008-04-04 | 2008-04-04 | 33 | 23d |  |  |  |  |
