# Software Development

Schedule from MS Project, 2004-01-01 to 2004-05-28.

## Calendars

- Standard: Mon-Fri 08:00-12:00, 13:00-17:00; Sat-Sun off.

## Resources

| Resource |
| --- |
| Management |
| Project manager |
| Analyst |
| Developer |
| Testers |
| Trainers |
| Technical communicators |
| Deployment team |

## Schedule

| ID | WBS | Task | Type | Duration | Start | Finish | Predecessors | Total slack | Resources | Work |
| --- | --- | --- | --- | --- | --- | --- | --- | --- | --- | --- |
| 1 | 1 | **Doseg** |  | 3.5d | 2004-01-01 | 2004-01-06 |  | 0d |  | 28h |
| 2 | 1.1 | Određivanje dosega |  | 4h | 2004-01-01 | 2004-01-01 |  | 0d | Management | 4h |
| 3 | 1.2 | Osiguranje sponzorstva |  | 1d | 2004-01-01 | 2004-01-02 | 2 | 0d | Management | 8h |
| 4 | 1.3 | Određivanje početnih resursa |  | 1d | 2004-01-02 | 2004-01-05 | 3 | 0d | Project manager | 8h |
| 5 | 1.4 | Osiguranje nužnih resursa |  | 1d | 2004-01-05 | 2004-01-06 | 4 | 0d | Project manager | 8h |
| 6 | 1.5 | Dovršetak dosega | milestone | 0d | 2004-01-06 | 2004-01-06 | 5 | 0d |  |  |
| 7 | 2 | **Analiza/Softverski zahtjevi** |  | 14d | 2004-01-06 | 2004-01-26 |  | 0d |  | 120h |
| 8 | 2.1 | Analiza potreba |  | 5d | 2004-01-06 | 2004-01-13 | 6 | 0d | Analyst | 40h |
| 9 | 2.2 | Okvirne početne specifikacije |  | 3d | 2004-01-13 | 2004-01-16 | 8 | 0d | Analyst | 24h |
| 10 | 2.3 | Razrada početnog budžeta |  | 2d | 2004-01-16 | 2004-01-20 | 9 | 0d | Project manager | 16h |
| 11 | 2.4 | Procjena specifikacije/budžeta s ekipom |  | 4h | 2004-01-20 | 2004-01-20 | 10 | 0d | Project manager; Analyst | 8h |
| 12 | 2.5 | Usvajanje povratnih informacija na specifikacije |  | 1d | 2004-01-21 | 2004-01-21 | 11 | 0d | Analyst | 8h |
| 13 | 2.6 | Razvoj rasporeda isporuka |  | 1d | 2004-01-22 | 2004-01-22 | 12 | 0d | Project manager | 8h |
| 14 | 2.7 | Traženje odobrenja za nastavak (koncept, raspored, budžet) |  | 4h | 2004-01-23 | 2004-01-23 | 13 | 0d | Management; Project manager | 8h |
| 15 | 2.8 | Osiguranje potrebnih resursa |  | 1d | 2004-01-23 | 2004-01-26 | 14 | 0d | Project manager | 8h |
| 16 | 2.9 | Dovršetak analize | milestone | 0d | 2004-01-26 | 2004-01-26 | 15 | 0d |  |  |
| 17 | 3 | **Dizajn** |  | 14.5d | 2004-01-26 | 2004-02-13 |  | 0d |  | 120h |
| 18 | 3.1 | Pregled početnih specifikacija softvera |  | 2d | 2004-01-26 | 2004-01-28 | 16 | 0d | Analyst | 16h |
| 19 | 3.2 | Razvoj funkcionalnih specifikacija |  | 5d | 2004-01-28 | 2004-02-04 | 18 | 0d | Analyst | 40h |
| 20 | 3.3 | Razvoj prototipa temeljem specifikacija |  | 4d | 2004-02-04 | 2004-02-10 | 19 | 0d | Analyst | 32h |
| 21 | 3.4 | Pregled funkcionalnih specifikacija |  | 2d | 2004-02-10 | 2004-02-12 | 20 | 0d | Management | 16h |
| 22 | 3.5 | Incorporate feedback into functional specifications |  | 1d | 2004-02-12 | 2004-02-13 | 21 | 0d | Management | 8h |
| 23 | 3.6 | Traženje odobrenja za nastavak |  | 4h | 2004-02-13 | 2004-02-13 | 22 | 0d | Management; Project manager | 8h |
| 24 | 3.7 | Dovršetak dizajna | milestone | 0d | 2004-02-13 | 2004-02-13 | 23 | 0d |  |  |

| ID | WBS | Task | Type | Duration | Start | Finish | Predecessors | Total slack | Free slack | Resources | Work |
| --- | --- | --- | --- | --- | --- | --- | --- | --- | --- | --- | --- |
| 25 | 4 | **Razvoj** |  | 33d | 2004-02-16 | 2004-03-31 |  | 0d |  |  | 264h |
| 26 | 4.1 | Pregled funkcionalnih specifikacija |  | 1d | 2004-02-16 | 2004-02-16 | 24 | 0d |  | Developer | 8h |
| 27 | 4.2 | Utvrđivanje parametara za oblikovanje programskih modula/slojeva |  | 1d | 2004-02-17 | 2004-02-17 | 26 | 0d |  | Developer | 8h |
| 28 | 4.3 | Pridljeljivanje razvojnog osoblja |  | 1d | 2004-02-18 | 2004-02-18 | 27 | 0d |  | Developer | 8h |
| 29 | 4.4 | Razvoj programskog koda |  | 15d | 2004-02-19 | 2004-03-10 | 28 | 0d |  | Developer | 120h |
| 30 | 4.5 | Razvojno testiranje (debugiranje) |  | 15d | 2004-03-11 | 2004-03-31 | 29FS-7.5% | 0d |  | Developer | 120h |
| 31 | 4.6 | Dovršetak razvoja | milestone | 0d | 2004-03-31 | 2004-03-31 | 30 | 0d |  |  |  |
| 32 | 5 | **Testiranje** |  | 60d | 2004-02-16 | 2004-05-07 |  | 15d |  |  | 280h |
| 33 | 5.1 | Izrada testova programskih cjelina prema specifikacijama proizvoda |  | 4d | 2004-02-16 | 2004-02-19 | 24 | 29d |  | Testers | 32h |
| 34 | 5.2 | Izrada plana integracijskog testiranja prema specifikacijama proizvoda |  | 4d | 2004-02-20 | 2004-02-25 | 24 | 67d |  | Testers | 32h |
| 35 | 5.3 | **Testiranje programskih cjelina** |  | 15d | 2004-04-01 | 2004-04-21 |  | 0d |  |  | 120h |
| 36 | 5.3.1 | Pregled programskog koda modula |  | 5d | 2004-04-01 | 2004-04-07 | 33, 31 | 0d |  | Testers | 40h |
| 37 | 5.3.2 | Testiranje komponenti prema specifikacijama proizvoda |  | 2d | 2004-04-08 | 2004-04-09 | 31, 36 | 0d |  | Testers | 16h |
| 38 | 5.3.3 | Utvrđivanje anomalija prema specifikacijama proizvoda |  | 3d | 2004-04-12 | 2004-04-14 | 37 | 0d |  | Testers | 24h |
| 39 | 5.3.4 | Izmjena programskog koda |  | 3d | 2004-04-15 | 2004-04-19 | 38 | 0d |  | Testers | 24h |
| 40 | 5.3.5 | Ponovno testiranje programskog koda |  | 2d | 2004-04-20 | 2004-04-21 | 39 | 0d |  | Testers | 16h |
| 41 | 5.3.6 | Dovršetak provjere jedinične | milestone | 0d | 2004-04-21 | 2004-04-21 | 40 | 0d |  |  |  |
| 42 | 5.4 | **Integracijsko testiranje** |  | 12d | 2004-04-22 | 2004-05-07 |  | 0d |  |  | 96h |
| 43 | 5.4.1 | Provjera integracije modula |  | 5d | 2004-04-22 | 2004-04-28 | 41 | 0d |  | Testers | 40h |
| 44 | 5.4.2 | Utvrđivanje anomalija prema specifikacijama proizvoda |  | 2d | 2004-04-29 | 2004-04-30 | 43 | 0d |  | Testers | 16h |
| 45 | 5.4.3 | Izmjena programskog koda |  | 3d | 2004-05-03 | 2004-05-05 | 44 | 0d |  | Testers | 24h |
| 46 | 5.4.4 | Ponovno testiranje programskog koda |  | 2d | 2004-05-06 | 2004-05-07 | 45 | 0d |  | Testers | 16h |
| 47 | 5.4.5 | Dovršetak integracijske provjere | milestone | 0d | 2004-05-07 | 2004-05-07 | 46 | 0d |  |  |  |
| 48 | 6 | **Poduka** |  | 57d | 2004-02-16 | 2004-05-04 |  | 3d |  |  | 256h |
| 49 | 6.1 | Izrada specifikacija poduke za krajnje korisnike |  | 3d | 2004-02-16 | 2004-02-18 | 24 | 33d | 30d | Trainers | 24h |
| 50 | 6.2 | Izrada specifikacija poduke za osoblje potpore (helpdesk) |  | 3d | 2004-02-19 | 2004-02-23 | 24 | 30d | 27d | Trainers | 24h |
| 51 | 6.3 | Određivanje metode poduke (računalna, tečaj, itd.) |  | 2d | 2004-02-24 | 2004-02-25 | 24 | 28d | 25d | Trainers | 16h |
| 52 | 6.4 | Izrada materijala za poduku |  | 3w | 2004-04-01 | 2004-04-21 | 49, 31, 50, 51 | 3d | 0d | Trainers | 120h |
| 53 | 6.5 | Analiza korisnosti poduke |  | 4d | 2004-04-22 | 2004-04-27 | 52 | 3d | 0d | Trainers | 32h |
| 54 | 6.6 | Dovršetak izrade materijala za poduku |  | 3d | 2004-04-28 | 2004-04-30 | 53 | 3d | 0d | Trainers | 24h |
| 55 | 6.7 | Razrada mehanizama isporuke poduke |  | 2d | 2004-05-03 | 2004-05-04 | 54 | 3d | 0d | Trainers | 16h |
| 56 | 6.8 | Dovršetak materijala za poduku | milestone | 0d | 2004-05-04 | 2004-05-04 | 55 | 3d |  |  |  |

| ID | WBS | Task | Type | Duration | Start | Finish | Predecessors | Total slack | Free slack | Resources | Work |
| --- | --- | --- | --- | --- | --- | --- | --- | --- | --- | --- | --- |
| 57 | 7 | **Dokumentacija** |  | 49d | 2004-02-16 | 2004-04-22 |  | 11d |  |  | 336h |
| 58 | 7.1 | Razvoj specifikacija sustava pomoći |  | 1d | 2004-02-16 | 2004-02-16 | 24 | 21.5d | 9.5d | Technical communicators | 8h |
| 59 | 7.2 | Razvoj sustava pomoći |  | 3w | 2004-03-01 | 2004-03-22 | 58, 29FS-5% | 12d | 0d | Technical communicators | 120h |
| 60 | 7.3 | Pregled dokumentacije pomoći |  | 3d | 2004-04-12 | 2004-04-14 | 59 | 12d | 0d | Technical communicators | 24h |
| 61 | 7.4 | Poboljšanje temeljem povratnih informacija o pomoći |  | 2d | 2004-04-19 | 2004-04-20 | 60 | 13d | 2d | Technical communicators | 16h |
| 62 | 7.5 | Razvoj specifikacija korisničkih priručnika |  | 2d | 2004-02-17 | 2004-02-18 | 24 | 18.5d | 7.5d | Technical communicators | 16h |
| 63 | 7.6 | Izrada korisničkih priručnika |  | 3w | 2004-03-01 | 2004-04-09 | 62, 29FS-5% | 11d | 0d | Technical communicators | 120h |
| 64 | 7.7 | Provjera sve korisničke dokumentacije |  | 2d | 2004-04-15 | 2004-04-16 | 63 | 11d | 0d | Technical communicators | 16h |
| 65 | 7.8 | Usvajanje primjedbi na dokumentaciju |  | 2d | 2004-04-21 | 2004-04-22 | 64 | 11d | 0d | Technical communicators | 16h |
| 66 | 7.9 | Dovršetak dokumentacije | milestone | 0d | 2004-04-22 | 2004-04-22 | 65, 61 | 11d |  |  |  |
| 67 | 8 | **Pilot** |  | 81.5d | 2004-01-26 | 2004-05-18 |  | 0d |  |  | 64h |
| 68 | 8.1 | Određivanje grupe za testiranje |  | 1d | 2004-01-26 | 2004-01-27 | 16 | 72.5d | 0d | Project manager | 8h |
| 69 | 8.2 | Razvoj mehanizama za isporuku softvera |  | 1d | 2004-01-27 | 2004-01-28 | 68 | 72.5d |  |  |  |
| 70 | 8.3 | Instalacija/ugradnja programske potpore |  | 1d | 2004-05-10 | 2004-05-10 | 47, 69, 66, 56 | 0d |  | Deployment team | 8h |
| 71 | 8.4 | Prikupljanje dojmova korisnika |  | 1w | 2004-05-11 | 2004-05-17 | 70 | 0d |  | Deployment team | 40h |
| 72 | 8.5 | Evaluacija rezultata testiranja |  | 1d | 2004-05-18 | 2004-05-18 | 71 | 0d |  | Deployment team | 8h |
| 73 | 8.6 | Dovršetak pilota | milestone | 0d | 2004-05-18 | 2004-05-18 | 72 | 0d |  |  |  |
| 74 | 9 | **Ugradnja** |  | 5d | 2004-05-19 | 2004-05-25 |  | 0d |  |  | 40h |
| 75 | 9.1 | Određivanje konačne strategije uvođenja |  | 1d | 2004-05-19 | 2004-05-19 | 73 | 0d |  | Deployment team | 8h |
| 76 | 9.2 | Razvoj metodologije uvođenja |  | 1d | 2004-05-20 | 2004-05-20 | 75 | 0d |  | Deployment team | 8h |
| 77 | 9.3 | Osiguranje resursa za ugradnju |  | 1d | 2004-05-21 | 2004-05-21 | 76 | 0d |  | Deployment team | 8h |
| 78 | 9.4 | Poduka potpornog osoblja |  | 1d | 2004-05-24 | 2004-05-24 | 77 | 0d |  | Deployment team | 8h |
| 79 | 9.5 | Ugradnja programske potpore |  | 1d | 2004-05-25 | 2004-05-25 | 78 | 0d |  | Deployment team | 8h |
| 80 | 9.6 | Dovršetak ugradnje | milestone | 0d | 2004-05-25 | 2004-05-25 | 79 | 0d |  |  |  |

| ID | WBS | Task | Type | Duration | Start | Finish | Predecessors | Total slack | Resources | Work |
| --- | --- | --- | --- | --- | --- | --- | --- | --- | --- | --- |
| 81 | 10 | **Post implementacijski pregled** |  | 3d | 2004-05-26 | 2004-05-28 |  | 0d |  | 24h |
| 82 | 10.1 | Dokumentiranje stečenih iskustava |  | 1d | 2004-05-26 | 2004-05-26 | 80 | 0d | Project manager | 8h |
| 83 | 10.2 | Distribucija članovima ekipe |  | 1d | 2004-05-27 | 2004-05-27 | 82 | 0d | Project manager | 8h |
| 84 | 10.3 | Kreiranje ekipe za održavanje |  | 1d | 2004-05-28 | 2004-05-28 | 83 | 0d | Project manager | 8h |
| 85 | 10.4 | Dovršetak post implementacijskog pregleda | milestone | 0d | 2004-05-28 | 2004-05-28 | 84 | 0d |  |  |
| 86 | 11 | Dovršetak razvoja programske potpore | milestone | 0d | 2004-05-28 | 2004-05-28 | 85 | 0d |  |  |
